# ThinkAgile VX services (Vmware vSAN) deployment service

Schedule from MS Project, 2023-06-26 to 2023-11-30, A marks actual dates.
supply and implementation
Deliver ICT and Telecommunications Technology PLC

## Calendars

- Deliver ICT project Calander: Mon-Sun 08:00-12:00, 13:00-17:00.

## Resources

| Resource | Group |
| --- | --- |
| Gebre A. | Internal |
| Melkamu G. | Internal |
| Tadele A. | internal |
| kirubel M. | internal |
| Dagnachew D. | internal |
| Yonas T. | External |
| Tadele A. | internal |
| Wubalem D. | internal |
| Sophia | internal |
| Jemal | internal |

## Schedule

| ID | WBS | Task | Type | Duration | Start | Finish | Predecessors | Complete | Remaining | Actual start | Total slack | Constraint |
| --- | --- | --- | --- | --- | --- | --- | --- | --- | --- | --- | --- | --- |
| 1 | 1 | Begin Project | milestone | 0d | 2023-06-26 A | 2023-06-26 A |  | 100% |  |  |  | start no earlier than 2023-06-26 |
| 2 | 2 | Contract preparation and Signing and Project Kick-off |  | 1d | 2023-06-26 A | 2023-06-26 A |  | 100% |  |  |  |  |
| 3 | 3 | Organizing Project Management Office (PMO) |  | 1d | 2023-06-27 A | 2023-06-27 A | 2 | 100% |  |  |  |  |
| 4 | 4 | Project Management Work |  | 156d | 2023-06-28 A | 2023-11-30 A | 3 | 100% |  |  |  | start no earlier than 2023-06-28 |
| 5 | 5 | **1-Item Delivery Phase** |  | 62d | 2023-08-28 A | 2023-10-28 |  | 86% | 8.39d |  | 33d |  |
| 6 | 5.1 | Anticipated LC approval Date for HCI Lenovo |  | 30d | 2023-08-28 A | 2023-09-26 A |  | 100% |  |  |  | start no earlier than 2023-08-28 |
| 7 | 5.2 | Anticipated LC approval Date for Cisco Switch |  | 30d | 2023-08-28 A | 2023-09-27 A |  | 100% |  |  |  | finish no earlier than 2023-08-28 |
| 8 | 5.3 | Anticipated LC approval Date Disk backup |  | 30d | 2023-08-28 A | 2023-09-27 A |  | 100% |  |  |  | finish no earlier than 2023-08-28 |
| 9 | 5.4 | Anticipated LC approval Date for Vmware Software |  | 30d | 2023-08-30 A | 2023-09-28 A |  | 100% |  |  |  | start no earlier than 2023-08-30 |
| 10 | 5.5 | Anticipated LC approval Date Veeam |  | 30d | 2023-08-28 A | 2023-09-27 A |  | 100% |  |  |  | finish no earlier than 2023-08-28 |
| 11 | 5.6 | **1.1 Placing order and ready the equipments** |  | 62d | 2023-08-28 A | 2023-10-28 |  | 67% | 20.67d |  | 33d |  |
| 12 | 5.6.1 | 1.1.1 HCI Lenovo Server |  | 30d | 2023-08-28 A | 2023-09-26 A | 6 | 100% |  |  |  |  |
| 13 | 5.6.2 | 1.1.2 Switch Cisco |  | 30d | 2023-08-29 A | 2023-09-27 A | 7 | 100% |  |  |  |  |
| 14 | 5.6.3 | 1.1.3 Disk backup |  | 30d | 2023-08-29 A | 2023-09-27 A | 8 | 100% |  |  |  |  |
| 15 | 5.6.4 | 1.1.4 VMWare |  | 30d | 2023-09-29 | 2023-10-28 | 9 |  |  |  | 33d |  |
| 16 | 5.6.5 | 1.1.5 Veeam |  | 15d | 2023-09-28 | 2023-10-12 | 10 |  |  |  | 49d | finish no earlier than 2023-09-27 |
| 17 | 5.7 | **1.2 Shipment to A.A Air Port** |  | 12d | 2023-09-28 A | 2023-10-09 A | 11 | 100% |  |  |  |  |
| 18 | 5.7.1 | 1.2.1 Hci Lenovo |  | 12d | 2023-09-28 A | 2023-10-09 A | 12 | 100% |  |  |  |  |
| 19 | 5.7.2 | 1.2.2 Switch |  | 10d | 2023-09-28 A | 2023-10-07 A | 13 | 100% |  |  |  |  |
| 20 | 5.7.3 | 1.2.3 Disk backup |  | 11d | 2023-09-28 A | 2023-10-08 A | 14 | 100% |  |  |  |  |
| 21 | 5.8 | **1.3 Custom clearance** |  | 8d | 2023-10-07 | 2023-10-14 | 17 | 92% | 0.67d | 2023-09-01 |  |  |
| 22 | 5.8.1 | 1.3.1 HCI Lenovo |  | 8d | 2023-09-01 A | 2023-09-08 A | 18 | 100% |  |  |  |  |
| 23 | 5.8.2 | 1.3.2 Cisco Switch |  | 8d | 2023-09-01 A | 2023-09-08 A | 19 | 100% |  |  |  |  |
| 24 | 5.8.3 | 1.3.3 Disk backup |  | 8d | 2023-09-01 A | 2023-10-08 |  | 75% | 2d |  | 53d |  |

| ID | WBS | Task | Duration | Start | Finish | Predecessors | Complete | Remaining | Total slack | Free slack | Constraint |
| --- | --- | --- | --- | --- | --- | --- | --- | --- | --- | --- | --- |
| 25 | 5.9 | **1.4 Delivery to Customer Warehouse** | 2d | 2023-09-01 A | 2023-09-02 A |  | 100% |  |  |  |  |
| 26 | 5.9.1 | 1.4.1 HCI Lenovo | 2d | 2023-09-01 A | 2023-09-02 A | 22 | 100% |  |  |  | finish no earlier than 2023-09-30 |
| 27 | 5.9.2 | 1.4.2 Cisco Switch | 2d | 2023-09-01 A | 2023-09-02 A | 23 | 100% |  |  |  | finish no earlier than 2023-10-04 |
| 28 | 5.9.3 | 1.4.3 Disk backup | 1.5d | 2023-09-01 A | 2023-09-02 A | 24 | 100% |  |  |  | finish no earlier than 2023-10-21 |
| 29 | 6 | **2-Design Phase** | 13d? | 2023-06-26 A | 2023-07-08 |  | 95% | 0.65d? | 145d |  |  |
| 30 | 6.1 | **2.1 Oveall HLD Design** | 8d | 2023-07-01 A | 2023-07-08 |  | 95% | 0.4d | 145d |  |  |
| 31 | 6.1.1 | 2.1 HCI | 5d | 2023-07-01 A | 2023-07-05 |  | 95% | 0.25d | 2.85d | 0d | start no earlier than 2023-07-01 |
| 32 | 6.1.2 | 2.2 ExaGrid | 3d | 2023-07-06 A | 2023-07-08 | 31 | 95% | 0.15d | 145d |  |  |
| 33 | 6.2 | **2.2 LLD for each solution** | 1d? | 2023-06-26 A | 2023-06-26 |  | 95% | 0.05d? | 157d |  |  |
| 34 | 6.2.1 | 2.2.1 HCI Lenovo | 1d? | 2023-06-26 A | 2023-06-26 |  | 95% | 0.05d? | 157d |  |  |
| 35 | 6.2.2 | 2.2.2 ExaGrid | 1d? | 2023-06-26 A | 2023-06-26 |  | 95% | 0.05d? | 157d |  |  |
| 36 | 7 | **3-Implementation/Integration/Migration/ Training Phase** | 143d? | 2023-06-26 A | 2023-11-15 |  | 29% | 101.68d? | 15d |  |  |
| 37 | 7.1 | 3.1 Cisco Switch Installation and configuration | 3d | 2023-10-10 A | 2023-10-12 |  | 95% | 0.15d | 49d |  | start no earlier than 2023-10-10 |
| 38 | 7.2 | **3.2 HCI Server** | 44d | 2023-10-03 A | 2023-11-15 |  | 34% | 29.09d | 15d |  |  |
| 39 | 7.2.1 | 3.2.1 Pre-setup and dead on arrival test new hardware | 2d | 2023-10-03 A | 2023-10-04 A |  | 100% |  |  |  | start no earlier than 2023-10-03 |
| 40 | 7.2.2 | 3.2.2 Rack Mount, cable and configure equipment | 3d | 2023-10-12 A | 2023-10-14 A |  | 100% |  |  |  | start no earlier than 2023-10-12 |
| 41 | 7.2.3 | 3.2.3 Production Deployment | 10d | 2023-10-16 A | 2023-10-25 |  | 60% | 4d | 1.2d | 0d | start no earlier than 2023-10-16 |
| 42 | 7.2.4 | 3.2.4 DR Cluster Deployment | 2d | 2023-10-26 A | 2023-10-27 | 41 | 60% | 0.8d | 15d | 0d |  |
| 43 | 7.2.5 | 3.2.5 Testing Prod and DR | 19d | 2023-10-28 | 2023-11-15 | 42 |  |  | 15d |  |  |
| 44 | 7.3 | 3.3 ExaGrid Deployment | 7d | 2023-10-22 | 2023-10-28 |  |  |  | 33d |  | start no earlier than 2023-10-22 |
| 45 | 7.4 | 3.4 Veeam | 9d | 2023-10-24 | 2023-11-01 |  |  |  | 29d |  | start no earlier than 2023-10-24 |
| 46 | 7.5 | **3.5 Training and Voucher** | 123d? | 2023-06-26 A | 2023-10-26 |  | 50% | 61.5d? | 35d |  |  |
| 47 | 7.5.1 | VMware | 1d? | 2023-06-26 A | 2023-06-26 A |  | 100% |  |  |  |  |
| 48 | 7.5.2 | DiskBackup | 1d? | 2023-10-26 | 2023-10-26 |  |  |  | 38d |  | start no earlier than 2023-10-26 |
| 49 | 7.5.3 | Veeam Backup Software Training | 1d? | 2023-10-16 A | 2023-10-16 A |  | 100% |  |  |  | finish no earlier than 2023-07-31 |
| 50 | 7.5.4 | Certification Voucher (2) | 1d? | 2023-06-26 | 2023-06-26 |  |  |  | 160d |  |  |

| ID | WBS | Task | Type | Duration | Start | Finish | Predecessors | Total slack | Free slack | Constraint |
| --- | --- | --- | --- | --- | --- | --- | --- | --- | --- | --- |
| 51 | 8 | **4- Handover** |  | 107d | 2023-06-26 | 2023-10-10 |  | 51d |  |  |
| 52 | 8.1 | 4.0 Overall Integration |  | 5d | 2023-06-26 | 2023-06-30 |  | 131d | 77d |  |
| 53 | 8.2 | 4.1 Perform final test with client |  | 10d | 2023-09-16 | 2023-09-25 | 52 | 54d | 0d | start no earlier than 2023-09-16 |
| 54 | 8.3 | 4.2 Last minute changes |  | 3d | 2023-09-26 | 2023-09-28 | 53 | 54d | 0d |  |
| 55 | 8.4 | 4.3 On site job training for each solution based on the BoM |  | 5d | 2023-09-29 | 2023-10-03 | 54 | 54d | 0d |  |
| 56 | 8.5 | 4.4 Producing As built-in document |  | 6d | 2023-10-04 | 2023-10-09 | 55 | 54d | 0d |  |
| 57 | 8.6 | 4.5 Clean up, restoration, and removal of all waste and excess materials, rubbish and to |  | 1d | 2023-10-10 | 2023-10-10 | 56 | 54d | 50d |  |
| 58 | 9 | Project Closure | milestone | 0d | 2023-11-30 | 2023-11-30 | 57 | 4d |  | start no earlier than 2023-11-30 |
